# Proyecto Fin de Carrera

How a schedule from MS Project changed from version to version. A marks actual dates.

## Version 1 (saved 2014-11-09)

Note of the change: Planning II

| ID | WBS | Task | Duration | Start | Finish | Complete | Total float | Constraint |
| --- | --- | --- | --- | --- | --- | --- | --- | --- |
| 1 | 1 | **Fase de evaluación** | 1d | 2014-01-20 A | 2014-01-30 A | 100% |  | must start on 2014-01-20 |
| 2 |  | Especificaciones técnicas | 3d | 2014-01-20 A | 2014-01-22 A | 100% |  | must finish on 2014-01-22 |
| 3 |  | Análisis comparativo de posibles soluciones | 1.1w | 2014-01-23 A | 2014-01-27 A | 100% |  | must start on 2014-01-23 |
| 4 |  | Solución escogida | 3d | 2014-01-28 A | 2014-01-30 A | 100% |  | must start on 2014-01-28 |
| 5 | 2 | **Fase de desarrollo** | 69d | 2014-02-10 A | 2014-05-05 A | 100% |  | must start on 2014-02-10 |
| 6 | 2.1 | **Grabación y procesado de los flujos** | 40.67d | 2014-02-10 A | 2014-03-31 A | 100% |  | must start on 2014-02-10 |
| 7 |  | Grabación de video | 19.83d | 2014-02-10 A | 2014-03-05 A | 100% |  | must start on 2014-02-10 |
| 8 |  | Grabación de entrada de audio | 1.2w | 2014-03-06 A | 2014-03-11 A | 100% |  | must start on 2014-03-06 |
| 9 |  | Codificación de los ficheros generados | 5.1w | 2014-03-11 A | 2014-03-31 A | 100% |  | must start on 2014-03-11 |
| 10 | 2.2 | **Reproduccion del puesto multipantalla** | 20.33d | 2014-04-02 A | 2014-04-26 A | 100% |  | finish no earlier than 2014-01-29 |
| 11 |  | Sincronismo de ficheros | 2.7w | 2014-04-02 A | 2014-04-12 A | 100% |  | must start on 2014-04-02 |
| 12 |  | Interfaz de reproducción | 11d | 2014-04-14 A | 2014-04-26 A | 100% |  | must start on 2014-04-14 |
| 13 | 2.3 | **Desarrollo de la interfaz gráfica** | 6.67d | 2014-04-28 A | 2014-05-05 A | 100% |  | must start on 2014-04-14 |
| 14 |  | Diálogos con el usuario | 3d | 2014-04-28 A | 2014-04-30 A | 100% |  | must start on 2014-04-28 |
| 15 |  | Creación de menús | 4d | 2014-04-30 A | 2014-05-05 A | 100% |  |  |
| 16 | 3 | **Fase de testeo** | 100d | 2014-06-02 A | 2014-10-03 A | 100% |  | must start on 2014-06-02 |
| 17 | 3.1 | **Local** | 30.67d | 2014-06-02 A | 2014-07-09 A | 100% |  | start no earlier than 2014-06-02 |
| 18 |  | Instalación del prototipo software | 5d | 2014-06-02 A | 2014-06-08 A | 100% |  | start no earlier than 2014-06-02 |
| 19 |  | Problemas y soluciones | 20d | 2014-06-09 A | 2014-07-02 A | 100% |  | must start on 2014-06-09 |
| 20 |  | Pruebas de rendimiento | 3d | 2014-07-07 A | 2014-07-09 A | 100% |  | must start on 2014-07-07 |
| 21 | 3.2 | **Cliente** | 26.33d | 2014-09-01 A | 2014-10-03 A | 100% |  | start no earlier than 2014-09-01 |
| 22 |  | Instalación del prototipo software | 15d | 2014-09-01 A | 2014-09-19 A | 100% |  | start no earlier than 2014-09-01 |
| 23 |  | Posibles problemas | 15d | 2014-09-15 A | 2014-10-02 A | 100% |  | must start on 2014-09-15 |
| 24 |  | Diferencias con equipo de desarrollo | 10d | 2014-09-22 A | 2014-10-03 A | 100% |  | must start on 2014-09-22 |
| 25 | 4 | **Fase final** | 113d | 2014-07-07 A | 2014-11-24 | 99% |  | start no earlier than 2014-06-16 |
| 26 | 4.1 | **Memoria** | 113d | 2014-07-07 A | 2014-11-24 | 99% |  | must start on 2014-07-07 |
| 27 |  | Primera versión | 3.98mo | 2014-07-07 A | 2014-10-13 | 99% | 0d | must start on 2014-07-08 |
| 28 |  | Revisión | 40d | 2014-10-06 A | 2014-11-24 A | 100% |  | must start on 2014-10-06 |
| 29 |  | Versión final | 20d | 2014-10-20 A | 2014-11-12 A | 100% |  | must start on 2014-10-20 |
| 30 | 4.2 | **Presentación** | 11.33d | 2014-11-03 A | 2014-11-16 A | 100% |  | must start on 2014-11-03 |
| 31 |  | Primera versión | 10d | 2014-11-03 A | 2014-11-14 A | 100% |  | must start on 2014-11-03 |
| 32 |  | Revisión | 5d | 2014-11-10 A | 2014-11-14 A | 100% |  | must start on 2014-11-10 |
| 33 |  | Versión final | 3d | 2014-11-12 A | 2014-11-16 A | 100% |  | must start on 2014-11-12 |

## Version 2 (saved 2014-11-11)

Note of the change: Memoria

Last finish 2014-11-24 → 2014-11-18 (-6d).

Changed:

| ID | Task | Start | Finish | Duration | Other |
| --- | --- | --- | --- | --- | --- |
| 25 | **Fase final** |  | 2014-11-24 → 2014-11-18 (-6d) | 113d → 109d |  |
| 26 | **Memoria** |  | 2014-11-24 → 2014-11-18 (-6d) | 113d → 109d |  |
| 28 | Revisión |  | 2014-11-24 A → 2014-11-13 A (-11d) | 40d → 32.33d |  |
| 29 | Versión final |  | 2014-11-12 A → 2014-11-18 A (+6d) | 20d → 24.67d | constraint must start on 2014-10-20 → finish no earlier than 2014-11-18 |
| 30 | **Presentación** | 2014-11-03 A → 2014-11-11 A (+8d) | 2014-11-16 A → 2014-11-18 A (+2d) | 11.33d → 6.67d |  |
| 31 | Primera versión | 2014-11-03 A → 2014-11-11 A (+8d) | 2014-11-14 A → 2014-11-12 A (-2d) | 10d → 2d |  |
| 32 | Revisión | 2014-11-10 A → 2014-11-12 A (+2d) |  | 5d → 3d |  |
| 33 | Versión final | 2014-11-12 A → 2014-11-14 A (+2d) | 2014-11-16 A → 2014-11-18 A (+2d) | 3d → 3.67d | constraint must start on 2014-11-12 → finish no earlier than 2014-11-18 |
